Schedule from MS Project, 2011-01-13 to 2012-04-11, A marks actual dates.

## Calendars

- Standard: Mon-Fri 08:00-12:00, 13:00-17:00; Sat-Sun off. Exceptions (off unless hours are given): 2011-05-30, 2011-07-04, 2011-09-05, 2011-10-10.

## Resources

| Resource |
| --- |
| Prasad |
| Dan |
| Vijay |
| Xiaoling |
| Aynur |
| Greg |
| (Xiaoling) |
| ` |

## Schedule

| ID | WBS | Task | Type | Duration | Start | Finish | Predecessors | Complete | Constraint | Resources | Work | Actual work |
| --- | --- | --- | --- | --- | --- | --- | --- | --- | --- | --- | --- | --- |
| 1 | 1 | **SDK 4.2.3** |  | 50.7d | 2011-03-15 A | 2011-05-24 A |  | 100% |  |  | 392h | 392h |
| 2 | 1.1 | GF 30729 Provide option to generate JUnit Tests for Logical Model Domain classes [already done] | milestone | 0d | 2011-03-15 A | 2011-03-15 A |  | 100% | start no earlier than 2011-03-15 |  |  |  |
| 3 | 1.2 | GF 30749 Third-Party Jars within the Code Generation Process |  | 5d | 2011-03-15 A | 2011-03-21 A |  | 100% | start no earlier than 2011-03-15 | Dan [75%] | 30h | 30h |
| 4 | 1.3 | GF 30753 Generation of the "not-null" Attribute with the "property" Element Node (not-null constraints) |  | 3d | 2011-03-30 A | 2011-04-01 A |  | 100% | start no earlier than 2011-03-30 | Vijay | 24h | 24h |
| 5 | 1.4 | GF 30748 Bi-directional self-associations |  | 5d | 2011-04-04 A | 2011-04-08 A |  | 100% | start no earlier than 2011-04-04 | Vijay | 40h | 40h |
| 6 | 1.5 | **GF 30510 Support (code generation) for interfaces** |  | 9d | 2011-03-30 A | 2011-04-11 A |  | 100% |  |  | 72h | 72h |
| 7 | 1.5.1 | Design |  | 2d | 2011-03-30 A | 2011-03-31 A |  | 100% | start no earlier than 2011-03-30 | Prasad | 16h | 16h |
| 8 | 1.5.2 | XMI Handler |  | 3d | 2011-04-01 A | 2011-04-05 A | 7 | 100% |  | Prasad | 24h | 24h |
| 9 | 1.5.3 | Code generation |  | 3d | 2011-04-06 A | 2011-04-08 A | 8 | 100% |  | Prasad | 24h | 24h |
| 10 | 1.5.4 | Test |  | 1d | 2011-04-11 A | 2011-04-11 A | 9 | 100% |  | Prasad | 8h | 8h |
| 11 | 1.6 | Dev testing and documentation |  | 4d | 2011-04-12 A | 2011-04-15 A | 2, 3, 4, 5, 10 | 100% |  | Prasad | 32h | 32h |
| 12 | 1.7 | Ivy support (XMI handler) |  | 2d | 2011-04-18 A | 2011-04-19 A | 11 | 100% |  | Prasad [25%] | 4h | 4h |
| 13 | 1.8 | QA test plan |  | 3d | 2011-04-14 A | 2011-04-18 A | 11FF | 100% | must start on 2011-04-14 | Xiaoling | 24h | 24h |
| 14 | 1.9 | QA |  | 9d | 2011-04-20 A | 2011-05-02 A | 12, 13 | 100% |  | Xiaoling | 72h | 72h |
| 15 | 1.10 | QA support |  | 7d | 2011-04-20 A | 2011-04-28 A | 14SS | 100% |  | Prasad [25%] | 14h | 14h |
| 16 | 1.11 | Optional QA for 30508, 30510, 30511, 30524 |  | 10d | 2011-05-09 A | 2011-05-24 A | 14 | 100% | start no earlier than 2011-05-09 | Xiaoling | 80h | 80h |
| 19 | 2 | **SDK 4.2.3 alternate database testing** |  | 18d? | 2011-06-08 A | 2011-07-01 A |  | 100% |  |  | 112h | 112h |
| 20 | 2.1 | Dev-supplied JUnits on Oracle |  | 2d | 2011-06-14 A | 2011-06-15 A |  | 100% | start no earlier than 2011-06-14 | Xiaoling | 16h | 16h |
| 21 | 2.2 | Smoke-test and 4.2.3 regression on Oracle |  | 3d | 2011-06-16 A | 2011-06-20 A | 20 | 100% |  | Xiaoling | 24h | 24h |
| 22 | 2.3 | Postgres installation issues |  | 5d? | 2011-06-08 A | 2011-06-14 A |  | 100% | start no earlier than 2011-06-08 |  |  |  |
| 23 | 2.4 | Build/deployment problems with Postgres |  | 2d | 2011-06-21 A | 2011-06-22 A | 22, 21 | 100% |  | Xiaoling | 16h | 16h |
| 24 | 2.5 | Dev-supplied JUnits on Postgres |  | 2d | 2011-06-23 A | 2011-06-24 A | 21, 23, 22 | 100% |  | Xiaoling | 16h | 16h |
| 25 | 2.6 | Smoke-test and 4.2.3 regression on Postgres |  | 5d | 2011-06-27 A | 2011-07-01 A | 24 | 100% |  | Xiaoling | 40h | 40h |
| 28 | 3 | **GF 31030 - CSM/UPT patch for EMMES (UPT-Tomcat support)** |  | 44d? | 2011-04-21 A | 2011-06-22 A |  | 100% |  |  | 149.46h | 149.46h |
| 29 | 3.1 | Installation instructions for Tomcat |  | 3d | 2011-04-21 A | 2011-05-04 A |  | 100% | start no earlier than 2011-04-21 | Prasad [75%] | 17.46h | 17.46h |
| 30 | 3.2 | UPT fixes |  | 6d | 2011-04-25 A | 2011-05-02 A |  | 100% | start no earlier than 2011-04-25 | Prasad [75%] | 36h | 36h |
| 31 | 3.3 | packaging |  | 1d | 2011-05-12 A | 2011-05-12 A | 30 | 100% | start no earlier than 2011-05-12 | Prasad | 8h | 8h |
| 32 | 3.4 | QA (limited to Tomcat and mySQL) |  | 7d | 2011-05-13 A | 2011-05-23 A | 31 | 100% | start no earlier than 2011-05-04 | Aynur | 56h | 56h |
| 33 | 3.5 | Release activities |  | 2d? | 2011-05-24 A | 2011-05-25 A | 32 | 100% |  | Prasad | 16h | 16h |

| ID | WBS | Task | Duration | Start | Finish | Predecessors | Complete | Remaining | Total slack | Constraint | Resources | Work | Actual work |
| --- | --- | --- | --- | --- | --- | --- | --- | --- | --- | --- | --- | --- | --- |
| 34 | 3.6 | **Alternate distribution packages** | 12d | 2011-06-07 A | 2011-06-22 A |  | 100% |  |  |  |  | 16h | 16h |
| 35 | 3.6.1 | Smoke-test GUI installer distribution | 4d | 2011-06-07 A | 2011-06-10 A |  | 100% |  |  | start no earlier than 2011-06-07 | Greg [25%] | 8h | 8h |
| 36 | 3.6.2 | Smoke-test upgrade distribution | 4d | 2011-06-15 A | 2011-06-22 A |  | 100% |  |  | start no earlier than 2011-06-15 | Greg [25%] | 8h | 8h |
| 39 | 4 | **Technology stack upgrade to 2011 "current" and "future"** | 125d? | 2011-05-13 A | 2011-11-09 |  | 74% | 32.41d? | 0d |  |  | 1658.8h | 1255.6h |
| 40 | 4.1 | CLM/LLT (base CLM only, CSM relies on CLM) | 1d | 2011-05-13 A | 2011-05-13 A |  | 100% |  |  | start no earlier than 2011-05-13 | Prasad | 8h | 8h |
| 41 | 4.2 | **CSM/UPT/CGMM** | 17d | 2011-05-16 A | 2011-06-08 A | 40 | 100% |  |  |  |  | 88h | 88h |
| 42 | 4.2.1 | JDK (migrate - done for a patch) | 1d | 2011-05-16 A | 2011-05-16 A |  | 100% |  |  | start no earlier than 2011-05-11 | Prasad | 8h | 8h |
| 43 | 4.2.2 | JBoss (migrate - done for a patch) | 1d | 2011-05-17 A | 2011-05-17 A | 42 | 100% |  |  |  | Prasad | 8h | 8h |
| 44 | 4.2.3 | UPT/Tomcat (migrate - in progress for a patch) | 1d | 2011-05-18 A | 2011-05-18 A | 43 | 100% |  |  |  | Prasad | 8h | 8h |
| 45 | 4.2.4 | Other | 2d | 2011-05-23 A | 2011-05-26 A | 44 | 100% |  |  | start no earlier than 2011-05-23 | Prasad | 16h | 16h |
| 46 | 4.2.5 | CGMM | 6d | 2011-06-01 A | 2011-06-08 A |  | 100% |  |  | start no earlier than 2011-06-01 | Prasad | 48h | 48h |
| 47 | 4.3 | CLM/LLT (LLT relies on CSM) | 2d | 2011-05-27 A | 2011-05-31 A | 41 | 100% |  |  |  | Prasad | 16h | 16h |
| 48 | 4.4 | XMI Handler (initial) | 2d | 2011-06-09 A | 2011-06-10 A |  | 100% |  |  | start no earlier than 2011-06-09 | Prasad [50%] | 8h | 8h |
| 49 | 4.5 | **SDK** | 15d | 2011-06-14 A | 2011-07-05 A | 48 | 100% |  |  |  |  | 72h | 72h |
| 50 | 4.5.1 | JDK | 1d | 2011-06-14 A | 2011-06-14 A |  | 100% |  |  | must start on 2011-06-14 | Prasad | 8h | 8h |
| 51 | 4.5.2 | Jboss | 1d | 2011-06-15 A | 2011-06-15 A | 50 | 100% |  |  |  | Prasad | 8h | 8h |
| 52 | 4.5.3 | Spring | 3d | 2011-06-22 A | 2011-06-24 A | 51 | 100% |  |  | must start on 2011-06-22 | Prasad [50%] | 12h | 12h |
| 53 | 4.5.4 | Hibernate | 2d | 2011-06-27 A | 2011-06-28 A | 52 | 100% |  |  |  | Prasad | 16h | 16h |
| 54 | 4.5.5 | Other technologies | 2d | 2011-06-29 A | 2011-06-30 A | 53 | 100% |  |  |  | Prasad [75%] | 12h | 12h |
| 55 | 4.5.6 | CQL->HQL workaround and Junit updates [aborted] | 2d | 2011-07-01 A | 2011-07-05 A | 54 | 100% |  |  | start no earlier than 2011-07-01 | Prasad | 16h | 16h |
| 56 | 4.6 | XMI Handler (formalized) | 1d? | 2011-07-06 A | 2011-07-06 A | 49 | 100% |  |  |  | Prasad | 8h | 8h |
| 57 | 4.7 | **Refocus from 2010 to 2011 "current" tech stack** | 4d | 2011-07-07 A | 2011-07-12 A |  | 100% |  |  |  |  | 32h | 32h |
| 58 | 4.7.1 | Re-version CLM API 4.2 to 4.1.1 | 1d | 2011-07-07 A | 2011-07-07 A |  | 100% |  |  | start no earlier than 2011-07-07 | Prasad | 8h | 8h |
| 59 | 4.7.2 | Re-version CSM 4.3 to 4.2.3 | 1d | 2011-07-08 A | 2011-07-08 A | 58 | 100% |  |  | start no earlier than 2011-07-08 | Prasad | 8h | 8h |
| 60 | 4.7.3 | Apply tech upgrades against SDK 4.4 to make 4.4.1 | 1.5d | 2011-07-11 A | 2011-07-12 A | 58 | 100% |  |  | start no earlier than 2011-07-11 | Prasad | 12h | 12h |
| 61 | 4.7.4 | Re-version CLM LLT 4.2 to 4.1.1 | 0.5d | 2011-07-12 A | 2011-07-12 A | 60 | 100% |  |  | start no earlier than 2011-07-12 | Prasad | 4h | 4h |

| ID | WBS | Task | Type | Duration | Start | Finish | Predecessors | Complete | Total slack | Constraint | Resources | Work | Actual work |
| --- | --- | --- | --- | --- | --- | --- | --- | --- | --- | --- | --- | --- | --- |
| 62 | 4.8 | **2011 "future"** |  | 23d | 2011-08-24 A | 2011-09-26 A | 203 | 100% |  | start no earlier than 2011-08-02 |  | 82h | 82h |
| 63 | 4.8.1 | CSM 4.2.4 (Spring/Struts/Ant) |  | 3d | 2011-08-24 A | 2011-08-26 A |  | 100% |  | start no earlier than 2011-08-24 | Prasad [75%] | 18h | 18h |
| 64 | 4.8.2 | CSM 4.2.4 - add backward compatibility fixes made in 4.2.3 |  | 2d | 2011-09-12 A | 2011-09-13 A | 63, 81 | 100% |  | start no earlier than 2011-09-12 | Prasad [50%] | 8h | 8h |
| 65 | 4.8.3 | **SDK 4.5** |  | 19d | 2011-08-29 A | 2011-09-23 A |  | 100% |  |  |  | 48h | 48h |
| 66 | 4.8.3.1 | Merge 4.2.3 enhancements into 4.5 |  | 6d | 2011-08-29 A | 2011-09-06 A |  | 100% |  | start no earlier than 2011-08-29 | Dan [25%] | 12h | 12h |
| 67 | 4.8.3.2 | Sprint, Struts, Ant upgrades |  | 4d | 2011-09-06 A | 2011-09-09 A |  | 100% |  | start no earlier than 2011-09-06 | Prasad [50%] | 16h | 16h |
| 68 | 4.8.3.3 | Update CQL-related Junits and re-run all Junits |  | 5d | 2011-09-12 A | 2011-09-16 A |  | 100% |  | start no earlier than 2011-09-12 | Dan [25%] | 10h | 10h |
| 69 | 4.8.3.4 | JUnits - automation failing for XML data tests w/ ISO |  | 5d | 2011-09-19 A | 2011-09-23 A |  | 100% |  | start no earlier than 2011-09-19 | Dan [25%] | 10h | 10h |
| 70 | 4.8.4 | CLM 4.1.2 (Spring/Struts/Ant) |  | 1d | 2011-09-26 A | 2011-09-26 A | 65, 72 | 100% |  | start no earlier than 2011-09-15 | Prasad | 8h | 8h |
| 71 | 4.9 | Workbench - test/review of versions and requirements |  | 3d | 2011-08-31 A | 2011-09-02 A |  | 100% |  | start no earlier than 2011-08-31 | Greg [25%] | 6h | 6h |
| 72 | 4.10 | Workbench 4.4.1 (supports 4.4.1 and 4.5) |  | 5d | 2011-09-14 A | 2011-09-20 A |  | 100% |  | start no earlier than 2011-09-14 | Prasad [50%] | 20h | 20h |
| 73 | 4.11 | **QA 2010 "current" [stopped]** |  | 8d | 2011-06-27 A | 2011-07-07 A |  | 100% |  |  |  | 80h | 80h |
| 74 | 4.11.1 | CLM/CSM [stopped] |  | 8d | 2011-06-27 A | 2011-07-07 A | 47 | 100% |  | start no earlier than 2011-06-27 | Aynur | 64h | 64h |
| 75 | 4.11.2 | SDK [stopped] |  | 2d | 2011-07-06 A | 2011-07-07 A | 49 | 100% |  | start no earlier than 2011-07-05 | Xiaoling | 16h | 16h |
| 76 | 4.12 | SDK 4.4.1 and CSM 4.2.3 bug fixes |  | 5d | 2011-07-18 A | 2011-07-22 A |  | 100% |  | start no earlier than 2011-07-18 | Prasad [75%] | 30h | 30h |
| 77 | 4.13 | QA support and minor bug fixes (2011 "current") |  | 11d | 2011-07-18 A | 2011-08-01 A |  | 100% |  | start no earlier than 2011-07-18 | Prasad [25%] | 22h | 22h |
| 78 | 4.14 | QA support and minor bug fixes (2011 "current") |  | 14d | 2011-08-02 A | 2011-08-23 A |  | 100% |  | start no earlier than 2011-08-02 | Prasad | 112h | 112h |
| 79 | 4.15 | QA support and minor bug fixes (2011 "current") |  | 8d | 2011-08-24 A | 2011-09-02 A |  | 100% |  | start no earlier than 2011-08-24 | Prasad [25%] | 16h | 16h |
| 80 | 4.16 | QA support (2011 "current") |  | 14d | 2011-09-06 A | 2011-09-23 A |  | 100% |  | start no earlier than 2011-09-06 | Prasad [50%] | 56h | 56h |
| 81 | 4.17 | testing and fixes for backward compatibility in CSM 4.2.3 |  | 5d | 2011-08-29 A | 2011-09-02 A |  | 100% |  | start no earlier than 2011-08-29 | Prasad [75%] | 30h | 30h |
| 82 | 4.18 | template investigation (SDK-705 and SDK-1354) |  | 3d | 2011-08-25 A | 2011-08-29 A |  | 100% |  | start no earlier than 2011-08-25 | Greg [50%] | 12h | 12h |
| 83 | 4.19 | CSM 4.2.3 - smoketest alternate distribution packages [stopped] |  | 3d | 2011-09-21 A | 2011-09-23 A |  | 100% |  | start no earlier than 2011-09-21 | Greg [20%] | 4.8h | 4.8h |
| 84 | 4.20 | CSM 4.2.4 - smoketest alternate distribution packages [dropped] | milestone | 0d | 2011-09-27 | 2011-09-27 | 83 |  | 31d | start no earlier than 2011-09-27 |  |  |  |
| 85 | 4.21 | --- QA and release activities need to be re-planned ---- | milestone | 0d | 2011-09-12 | 2011-09-12 |  |  | 42d | start no earlier than 2011-09-12 |  |  |  |

| ID | WBS | Task | Duration | Start | Finish | Predecessors | Complete | Remaining | Total slack | Free slack | Constraint | Resources | Work | Actual work |
| --- | --- | --- | --- | --- | --- | --- | --- | --- | --- | --- | --- | --- | --- | --- |
| 86 | 4.22 | **QA 2011 "current"** | 54d? | 2011-07-11 A | 2011-09-23 |  | 84% | 8.53d? | 5d | 0d |  |  | 676h | 552.8h |
| 87 | 4.22.1 | **CSM 4.2.3** | 43d | 2011-07-11 A | 2011-09-08 | 59 | 88% | 4.98d | 12d | 0d |  |  | 304h | 268.8h |
| 88 | 4.22.1.1 | set-up and 1st round | 6d | 2011-07-11 A | 2011-07-18 A | 59 | 100% |  |  |  |  | Aynur | 48h | 48h |
| 89 | 4.22.1.2 | update test cases (as needed) | 1d | 2011-07-19 A | 2011-07-19 A | 59 | 100% |  |  |  | start no earlier than 2011-07-19 | Aynur | 8h | 8h |
| 90 | 4.22.1.3 | UPT regression - mySQL | 6d | 2011-07-20 A | 2011-07-27 A |  | 100% |  |  |  | start no earlier than 2011-07-20 | Aynur | 48h | 48h |
| 91 | 4.22.1.4 | deployment testing - Oracle and PostgreSQL | 2d | 2011-07-28 A | 2011-07-29 A |  | 100% |  |  |  | start no earlier than 2011-07-28 | Aynur | 16h | 16h |
| 92 | 4.22.1.5 | UPT regression - Oracle | 4d | 2011-08-01 A | 2011-08-04 A | 91 | 100% |  |  |  |  | Aynur | 32h | 32h |
| 93 | 4.22.1.6 | instance level security | 5d | 2011-08-05 A | 2011-08-11 A | 92 | 100% |  |  |  |  | Aynur | 40h | 40h |
| 94 | 4.22.1.7 | UPT regression - PostgreSQL | 4d | 2011-08-12 A | 2011-08-17 A | 93 | 100% |  |  |  |  | Aynur | 32h | 32h |
| 95 | 4.22.1.8 | API testing | 7d | 2011-08-18 A | 2011-09-02 | 94 | 80% | 1.4d | 12d | 0d | start no earlier than 2011-08-18 | Aynur | 56h | 44.8h |
| 96 | 4.22.1.9 | backward compatibility testing | 3d | 2011-09-06 | 2011-09-08 | 95 |  |  | 12d |  | start no earlier than 2011-09-06 | Aynur | 24h |  |
| 97 | 4.22.2 | CLM 4.1.1 | 3d | 2011-09-09 | 2011-09-13 | 61, 87 |  |  | 12d | 0d | start no earlier than 2011-06-27 | Aynur | 24h |  |
| 98 | 4.22.3 | CSM/CLM test report | 1d | 2011-09-14 | 2011-09-14 | 87, 97 |  |  | 12d | 0d | start no earlier than 2011-08-02 | Aynur | 8h |  |
| 99 | 4.22.4 | **SDK 4.4.1** | 42.5d? | 2011-07-12 A | 2011-09-09 |  | 92% | 3.24d? | 7d |  |  |  | 316h | 284h |
| 100 | 4.22.4.1 | set-up and initial tests | 3.5d | 2011-07-12 A | 2011-07-15 A | 60 | 100% |  |  |  |  | Xiaoling | 28h | 28h |
| 101 | 4.22.4.2 | Oracle database including junit tests | 8d | 2011-07-18 A | 2011-07-27 A | 100 | 100% |  |  |  |  | Xiaoling | 64h | 64h |
| 102 | 4.22.4.3 | Tomcat 6.0.20 with database Oracle and MySQL, Junit tests | 6d | 2011-07-28 A | 2011-08-04 A | 101 | 100% |  |  |  |  | Xiaoling | 48h | 48h |
| 103 | 4.22.4.4 | jboss 5.1.0 with database Oracle and MySQL, Junit tests | 2d | 2011-08-05 A | 2011-08-08 A | 102 | 100% |  |  |  |  | Xiaoling | 16h | 16h |
| 104 | 4.22.4.5 | post-fix retests and backward compatibility tests | 4d | 2011-08-09 A | 2011-08-12 A | 103 | 100% |  |  |  |  | Xiaoling | 32h | 32h |
| 105 | 4.22.4.6 | Tomcat and Jboss with PostgreSQL database and Junit tests [split] | 3d | 2011-08-15 A | 2011-08-17 A | 104 | 100% |  |  |  |  | Xiaoling | 24h | 24h |
| 106 | 4.22.4.7 | PostgreSQL availability and issues (?) | 13d? | 2011-08-08 A | 2011-08-24 A |  | 100% |  |  |  | start no earlier than 2011-08-08 |  |  |  |
| 107 | 4.22.4.8 | verification of Grid authentication fix | 2d | 2011-08-18 A | 2011-08-19 A |  | 100% |  |  |  | start no earlier than 2011-08-18 | Xiaoling | 16h | 16h |
| 108 | 4.22.4.9 | Tomcat and Jboss with PostgreSQL database and Junit tests | 4d | 2011-08-25 A | 2011-08-30 A | 106 | 100% |  |  |  | start no earlier than 2011-08-25 | Xiaoling | 32h | 32h |
| 109 | 4.22.4.10 | adding and modifying *.java test cases in Junit, local-client, and remote client for Writable API; | 3d | 2011-08-31 A | 2011-09-02 A | 108 | 100% |  |  |  | start no earlier than 2011-08-02 | Xiaoling | 24h | 24h |
| 110 | 4.22.4.11 | testing with caGrid 1.4 | 3d | 2011-09-06 | 2011-09-08 | 109 |  |  | 7d | 0d | start no earlier than 2011-08-02 | Xiaoling | 24h |  |
| 111 | 4.22.4.12 | documentation | 1d | 2011-09-09 | 2011-09-09 | 110 |  |  | 7d |  | start no earlier than 2011-08-02 | Xiaoling | 8h |  |
| 112 | 4.22.5 | Workbench | 3d | 2011-09-21 | 2011-09-23 | 99, 72 |  |  | 0d |  | start no earlier than 2011-09-06 | Xiaoling | 24h |  |
| 113 | 4.23 | Release activities 2011 current - concurrent with QA | 3d | 2011-09-21 | 2011-09-23 | 86FF |  |  | 12d | 0d | start no earlier than 2011-07-20 |  |  |  |
| 114 | 4.24 | Release activities 2011 "current" - post QA | 5d | 2011-09-26 | 2011-09-30 | 86, 113 |  |  | 12d |  |  |  |  |  |

| ID | WBS | Task | Type | Duration | Start | Finish | Predecessors | Complete | Remaining | Total slack | Free slack | Constraint | Resources | Work | Actual work |
| --- | --- | --- | --- | --- | --- | --- | --- | --- | --- | --- | --- | --- | --- | --- | --- |
| 115 | 4.25 | **QA 2011 "future"** |  | 27d | 2011-09-15 | 2011-10-24 |  |  |  | 0d |  |  |  | 280h |  |
| 116 | 4.25.1 | CSM/UPT 4.2.4 |  | 10d | 2011-09-15 | 2011-09-28 | 98, 64 |  |  | 12d | 0d | start no earlier than 2011-07-22 | Aynur | 80h |  |
| 117 | 4.25.2 | CLM/LLT 4.1.2 |  | 5d | 2011-09-29 | 2011-10-05 | 116, 70 |  |  | 12d |  | start no earlier than 2011-06-27 | Aynur | 40h |  |
| 118 | 4.25.3 | SDK 4.5 |  | 20d | 2011-09-26 | 2011-10-24 | 65, 112 |  |  | 0d |  | start no earlier than 2011-06-24 | Xiaoling | 160h |  |
| 119 | 4.26 | Release activities 2011 "future" - concurrent with QA |  | 3d | 2011-10-20 | 2011-10-24 | 115FF, 114 |  |  | 0d |  |  |  |  |  |
| 120 | 4.27 | Release activities 2011 "future" - post QA |  | 5d | 2011-10-25 | 2011-10-31 | 115, 114, 119 |  |  | 0d |  | start no earlier than 2011-07-20 |  |  |  |
| 121 | 4.28 | **QA for upgraded non-core applications (not listed in tech stacks)** |  | 3d | 2011-10-25 | 2011-10-27 |  |  |  | 2d |  |  |  |  |  |
| 122 | 4.28.1 | CGMM |  | 3d | 2011-10-25 | 2011-10-27 | 115 |  |  | 2d |  | start no earlier than 2011-08-22 |  |  |  |
| 123 | 4.29 | Release activities for non-core applications |  | 7d? | 2011-11-01 | 2011-11-09 | 121, 120 |  |  | 0d |  | start no earlier than 2011-08-22 |  |  |  |
| 124 | 4.30 | CGMM (not in tech stack document) |  | 1d? | 2011-09-27 | 2011-09-27 |  |  |  | 30d |  | start no earlier than 2011-09-27 |  |  |  |
| 125 | 4.31 | (Target release date - 2010 "current") | milestone | 0d | 2011-08-11 | 2011-08-11 |  |  |  | 63d |  | start no earlier than 2011-08-11 |  |  |  |
| 126 | 4.32 | (Target release date - 2010 "future") | milestone | 0d | 2011-08-25 | 2011-08-25 |  |  |  | 53d |  | start no earlier than 2011-08-25 |  |  |  |
| 129 | 5 | **Ivy/Maven migration** |  | 16d? | 2011-10-04 A | 2011-10-26 |  | 22% | 12.44d? | 120d |  |  |  | 112h | 16h |
| 130 | 5.1 | Remove BDA dependencies - CSM 4.2.4 |  | 4d | 2011-10-04 A | 2011-10-07 A |  | 100% |  |  |  | start no earlier than 2011-10-04 | Prasad [50%] | 16h | 16h |
| 131 | 5.2 | Repository migration - CSM 4.2.4 |  | 4d | 2011-10-11 | 2011-10-14 |  |  |  | 110d | 0d | start no earlier than 2011-10-11 | Prasad | 32h |  |
| 132 | 5.3 | Repository and BDA - SDK 4.4.1 |  | 4d? | 2011-10-17 | 2011-10-20 | 131 |  |  | 110d | 0d | start no earlier than 2011-10-11 | Prasad | 32h |  |
| 133 | 5.4 | Repository and BDA - SDK 4.5 |  | 2d | 2011-10-21 | 2011-10-24 | 132 |  |  | 110d | 0d | start no earlier than 2011-10-11 | Prasad | 16h |  |
| 134 | 5.5 | Repository and BDA - CSM 4.2.3 (?) |  | 2d | 2011-10-25 | 2011-10-26 | 131, 133 |  |  | 110d | 0d | start no earlier than 2011-10-11 | Prasad | 16h |  |
| 135 | 5.6 | additional modifications to pending releases (?) |  | 1d? | 2011-10-04 | 2011-10-04 |  |  |  | 135d |  | start no earlier than 2011-10-04 |  |  |  |
| 136 | 5.7 | patch scripts for earlier releases (?) |  | 1d? | 2011-10-04 | 2011-10-04 |  |  |  | 135d |  | start no earlier than 2011-10-04 |  |  |  |
| 139 | 6 | **REST API analysis and implementation** |  | 35d? | 2011-09-21 A | 2011-11-09 |  | 32% | 23.65d? | 110d |  |  |  | 72h | 68h |
| 140 | 6.1 | REST support - servlet vs JAXrs document |  | 3d | 2011-09-21 A | 2011-09-23 A |  | 100% |  |  |  | start no earlier than 2011-09-20 | Prasad [50%] | 12h | 12h |
| 141 | 6.2 | REST support - servlet vs JAXrs document - review and updates |  | 1d | 2011-09-27 A | 2011-09-27 A | 140 | 100% |  |  |  | start no earlier than 2011-09-27 | Prasad | 8h | 8h |
| 142 | 6.3 | Requirements discussions |  | 5d | 2011-09-26 | 2011-09-30 |  |  |  | 137d |  | start no earlier than 2011-09-26 | Greg [10%] | 4h |  |
| 143 | 6.4 | JAX-RS Jersey vs Apache CXF comparison (test implementations) |  | 4d | 2011-09-28 A | 2011-10-03 A | 142 | 100% |  |  |  |  | Prasad | 32h | 32h |
| 144 | 6.5 | Document current state vs. and path towards "real" REST |  | 4d | 2011-10-04 A | 2011-10-07 A | 143 | 100% |  |  |  |  | Prasad [50%] | 16h | 16h |
| 145 | 6.6 | "real" REST (GET only) |  | 10d? | 2011-10-27 | 2011-11-09 | 144, 134 |  |  | 109d |  |  |  |  |  |
| 146 | 6.7 | REST support for non-SDK applications - research |  | 10d? | 2011-09-21 | 2011-10-04 |  |  |  | 135d |  | start no earlier than 2011-09-21 |  |  |  |

| ID | WBS | Task | Duration | Start | Finish | Predecessors | Complete | Remaining | Total slack | Free slack | Constraint | Resources | Work | Actual work |
| --- | --- | --- | --- | --- | --- | --- | --- | --- | --- | --- | --- | --- | --- | --- |
| 149 | 7 | **UPT Improvement Plan** | 166d? | 2011-03-14 A | 2011-11-04 |  | 70% | 50.27d? | 3d |  |  |  | 96.4h | 72h |
| 150 | 7.1 | Analysis of existing trackers | 6d | 2011-03-14 A | 2011-03-21 A |  | 100% |  |  |  | start no earlier than 2011-03-14 | Prasad | 48h | 48h |
| 151 | 7.2 | Requirements gathering with NBIA | 20d? | 2011-03-28 A | 2011-04-22 A |  | 100% |  |  |  | start no earlier than 2011-03-28 |  |  |  |
| 152 | 7.3 | Draft project plan development (partial) | 2d | 2011-05-13 A | 2011-05-16 A | 150, 151FF | 100% |  |  |  | start no earlier than 2011-05-13 |  |  |  |
| 153 | 7.4 | Internal review of proposed features | 0.25d | 2011-05-27 A | 2011-05-27 A | 152 | 100% |  |  |  | start no earlier than 2011-05-27 |  |  |  |
| 154 | 7.5 | **Research on use of systems-hosted older versions [incomplete]** | 50d? | 2011-06-13 A | 2011-08-22 A | 153 | 100% |  |  |  |  |  | 24h | 24h |
| 155 | 7.5.1 | Formulate initial query | 1d | 2011-06-13 A | 2011-06-13 A |  | 100% |  |  |  | start no earlier than 2011-06-13 | Greg [25%] | 2h | 2h |
| 156 | 7.5.2 | Lead time and systems response (est.) | 10d? | 2011-06-14 A | 2011-06-27 A | 155 | 100% |  |  |  |  |  |  |  |
| 157 | 7.5.3 | Formulate subsequent queries | 6d | 2011-06-28 A | 2011-07-06 A | 156 | 100% |  |  |  |  | Greg [25%] | 12h | 12h |
| 158 | 7.5.4 | Lead time and systems response (est.) | 5d? | 2011-07-07 A | 2011-07-13 A | 157 | 100% |  |  |  |  |  |  |  |
| 159 | 7.5.5 | Determine why subsequent queries returned no results and re-submit [incomplete] | 5d | 2011-08-02 A | 2011-08-22 A |  | 100% |  |  |  | start no earlier than 2011-08-02 | Greg [25%] | 10h | 10h |
| 160 | 7.6 | Initial task sheet (TRB presentation prep) | 5d | 2011-10-03 | 2011-10-07 |  |  |  | 22d |  | start no earlier than 2011-10-03 | Greg [25%] | 10h |  |
| 161 | 7.7 | Revised task sheet (TRB presentation prep) | 4d | 2011-10-11 | 2011-10-14 | 154 |  |  | 3d | 0d | start no earlier than 2011-10-11 | Greg [20%] | 6.4h |  |
| 162 | 7.8 | Draft project plan | 5d | 2011-10-17 | 2011-10-21 | 161 |  |  | 3d | 0d | start no earlier than 2011-06-27 | Greg [20%] | 8h |  |
| 163 | 7.9 | Review plan with user representatives and amend | 10d? | 2011-10-24 | 2011-11-04 | 162 |  |  | 2d |  |  |  |  |  |
| 166 | 8 | **UPT enhancements [changes expected]** | 110d | 2011-11-10 | 2012-04-11 | 149, 39 |  |  | 0d |  |  |  |  |  |
| 167 | 8.1 | GF 30436 Better LDAP integration when adding users to UPT | 5d | 2011-11-10 | 2011-11-16 |  |  |  | 0d |  |  |  |  |  |
| 168 | 8.2 | GF 22524 Authentication - DataSource LoginModule | 3d | 2011-11-17 | 2011-11-21 | 167 |  |  | 0d |  |  |  |  |  |
| 169 | 8.3 | GF 1158/2830 Implement paging for UPT | 10d | 2011-11-22 | 2011-12-05 | 168 |  |  | 0d |  |  |  |  |  |
| 170 | 8.4 | GF 22540/29002/30435 Password changes | 10d | 2011-12-06 | 2011-12-19 | 169 |  |  | 0d |  |  |  |  |  |
| 171 | 8.5 | GF 15527 CSM username field length should be increased to 100 characters | 1d | 2011-12-20 | 2011-12-20 | 170 |  |  | 0d |  |  |  |  |  |
| 172 | 8.6 | GF 19369 Indicate UPT /CSM version names in the Application Header after login | 2d | 2011-12-21 | 2011-12-22 | 171 |  |  | 0d |  |  |  |  |  |
| 173 | 8.7 | GF 631/22236 Password recovery | 5d | 2011-12-23 | 2011-12-29 | 172 |  |  | 0d |  |  |  |  |  |
| 174 | 8.8 | GF 30019 User lockout on unsuccessful logins | 5d | 2011-12-30 | 2012-01-05 | 173 |  |  | 0d |  |  |  |  |  |
| 175 | 8.9 | GF 2913 Add an Active Flag for users | 5d | 2012-01-06 | 2012-01-12 | 174 |  |  | 0d |  |  |  |  |  |
| 176 | 8.10 | GF 24404 UPT GUI installer should validate database connection info | 3d | 2012-01-13 | 2012-01-17 | 175 |  |  | 0d |  |  |  |  |  |
| 177 | 8.11 | GF 30372 Change UPT install.properties file to note properties that must be replaced | 1d | 2012-01-18 | 2012-01-18 | 176 |  |  | 0d |  |  |  |  |  |
| 178 | 8.12 | GF 1154/30433 Synchronization between UPT and supported application | 15d | 2012-01-19 | 2012-02-08 | 177 |  |  | 0d |  |  |  |  |  |
| 179 | 8.13 | GF 24965 Documentation changes from CDL installation | 1d | 2012-02-09 | 2012-02-09 | 178 |  |  | 0d |  |  |  |  |  |
| 180 | 8.14 | GF 24116 Need stronger access control | 10d | 2012-02-10 | 2012-02-23 | 179 |  |  | 0d |  |  |  |  |  |
| 181 | 8.15 | GF 2914 Auto-email new user or associated user | 4d | 2012-02-24 | 2012-02-29 | 180 |  |  | 0d |  |  |  |  |  |
| 182 | 8.16 | User friendly UPT UI | 15d | 2012-03-01 | 2012-03-21 | 181 |  |  | 0d |  |  |  |  |  |
| 183 | 8.17 | Customizable UPT UI | 15d | 2012-03-22 | 2012-04-11 | 182 |  |  | 0d |  |  |  |  |  |

| ID | WBS | Task | Duration | Start | Finish | Predecessors | Complete | Remaining | Total slack | Free slack | Constraint | Resources | Work | Actual work |
| --- | --- | --- | --- | --- | --- | --- | --- | --- | --- | --- | --- | --- | --- | --- |
| 186 | 9 | **XMI Handler** | 12d? | 2011-08-17 A | 2011-09-01 |  | 17% | 10d? | 157d |  |  |  | 4h | 4h |
| 187 | 9.1 | Test use of new XMI Handler modeling features with SIW and document results [stopped] | 2d | 2011-08-17 A | 2011-08-18 A |  | 100% |  |  |  | start no earlier than 2011-08-17 | Greg [25%] | 4h | 4h |
| 188 | 9.2 | Coordinate official 1.1 release | 5d? | 2011-08-19 | 2011-08-25 | 187 |  |  | 157d | 0d | start no earlier than 2011-06-29 |  |  |  |
| 189 | 9.3 | Coordinate 1.2 release (tech stack upgrade)? | 5d? | 2011-08-26 | 2011-09-01 | 56, 188 |  |  | 157d |  | start no earlier than 2011-06-30 |  |  |  |
| 192 | 10 | **Analysis** | 156d? | 2011-03-22 A | 2011-10-31 |  | 74% | 40.7d? | 117d |  |  |  | 272.4h | 242.4h |
| 193 | 10.1 | **older completed tasks** | 93d | 2011-03-22 A | 2011-08-01 A |  | 100% |  |  |  |  |  | 216h | 216h |
| 194 | 10.1.1 | Eclipse/SDK comparison and gap analysis | 5d | 2011-03-22 A | 2011-03-28 A |  | 100% |  |  |  | start no earlier than 2011-03-22 | Prasad | 40h | 40h |
| 195 | 10.1.2 | User requirements/need for SDK (combined with Eclipse/SDK analysis) | 3d | 2011-04-15 A | 2011-04-19 A |  | 100% |  |  |  | start no earlier than 2011-04-15 | Prasad [75%] | 18h | 18h |
| 196 | 10.1.3 | caGrid with JBoss 5.1 | 3d | 2011-05-05 A | 2011-05-12 A |  | 100% |  |  |  | start no earlier than 2011-05-05 | Prasad | 24h | 24h |
| 197 | 10.1.4 | Ideal architecture for separation of SDK and caGrid [incomplete, deferred indefinitely] | 2d | 2011-06-09 A | 2011-06-10 A |  | 100% |  |  |  | start no earlier than 2011-06-09 | Prasad [50%] | 8h | 8h |
| 198 | 10.1.5 | Test Globus WSRF (caGrid) and JBoss 5.1 | 1d | 2011-06-13 A | 2011-06-13 A |  | 100% |  |  |  | start no earlier than 2011-06-13 | Prasad | 8h | 8h |
| 199 | 10.1.6 | Evaluate caTissue source with respect to potential use of SDK | 3d | 2011-06-16 A | 2011-06-20 A |  | 100% |  |  |  | start no earlier than 2011-06-16 | Prasad | 24h | 24h |
| 200 | 10.1.7 | Review and revise caTissue/SDK analysis | 1d | 2011-06-21 A | 2011-06-21 A | 199 | 100% |  |  |  |  | Prasad | 8h | 8h |
| 201 | 10.1.8 | caTissue Jamboree | 3d | 2011-06-22 A | 2011-06-24 A |  | 100% |  |  |  | finish no earlier than 2011-06-24 | Prasad [50%] | 12h | 12h |
| 202 | 10.1.9 | NBIA security discussion on federated grid credentials | 2d | 2011-06-29 A | 2011-06-30 A |  | 100% |  |  |  | start no earlier than 2011-06-29 | Prasad [25%] | 4h | 4h |
| 203 | 10.1.10 | ISO/SDK use - examples and presentation | 3d | 2011-07-13 A | 2011-07-15 A |  | 100% |  |  |  | start no earlier than 2011-07-13 | Prasad | 24h | 24h |
| 204 | 10.1.11 | SDK capabilities documentation & presentation support | 2d | 2011-07-25 A | 2011-07-26 A |  | 100% |  |  |  | start no earlier than 2011-07-25 | Prasad [75%] | 12h | 12h |
| 205 | 10.1.12 | ISO/SDK use - examples and presentation (revisited) | 4d | 2011-07-27 A | 2011-08-01 A |  | 100% |  |  |  | start no earlier than 2011-07-27 | Prasad [75%] | 24h | 24h |
| 206 | 10.1.13 | Investigate problem with caGrid-flavored CQL and SDK 4.4 w/ ISO data types despite workaround [canceled] | 5d | 2011-07-18 A | 2011-07-22 A |  | 100% |  |  |  | start no earlier than 2011-07-18 | Dan [25%] | 10h | 10h |
| 207 | 10.2 | IVY repository use and transition to Maven - investigation | 4d | 2011-09-15 A | 2011-09-20 A |  | 100% |  |  |  | start no earlier than 2011-09-15 | Greg [20%] | 6.4h | 6.4h |
| 208 | 10.3 | Ideal architecture for separation of SDK and caGrid | 3d | 2011-07-18 | 2011-07-20 |  |  |  | 188d |  | start no earlier than 2011-07-18 |  |  |  |
| 209 | 10.4 | 508 compliance reviews | 25d? | 2011-09-26 A | 2011-10-31 |  | 40% | 15d? | 117d |  | start no earlier than 2011-09-26 | Dan [25%] | 50h | 20h |
| 212 | 11 | **CSM bug fixes (code - no release specified)** | 6d | 2011-03-14 A | 2011-03-21 A |  | 100% |  |  |  |  |  | 48h | 48h |
| 213 | 11.1 | GF 29450 CSM – Users locked out due to invalid logins may be (effectively) locked out forever | 5d | 2011-03-14 A | 2011-03-18 A |  | 100% |  |  |  | start no earlier than 2011-03-14 | Vijay | 40h | 40h |
| 214 | 11.2 | GF 30372 CSM/UPT - Change UPT install.properties file to note properties that must be replaced | 1d | 2011-03-21 A | 2011-03-21 A |  | 100% |  |  |  | start no earlier than 2011-03-21 | Vijay | 8h | 8h |

| ID | WBS | Task | Type | Duration | Start | Finish | Predecessors | Complete | Remaining | Total slack | Free slack | Constraint | Resources | Work | Actual work |
| --- | --- | --- | --- | --- | --- | --- | --- | --- | --- | --- | --- | --- | --- | --- | --- |
| 217 | 12 | **SDK 4.1.3 - GF 27529 patch to 4.1.2 (for caBIO)** |  | 0d | 2011-03-14 A | 2011-03-14 |  |  | 0d | 279d |  |  |  |  |  |
| 218 | 12.1 | apply fix for GF 27529 to 4.1.2 [already done] | milestone | 0d | 2011-03-14 A | 2011-03-14 A |  | 100% |  |  |  | start no earlier than 2011-03-14 |  |  |  |
| 219 | 12.2 | QA [low priority] [deferred indefinitely] | milestone | 0d | 2011-03-14 | 2011-03-14 | 218 |  |  | 279d | 0d | start no earlier than 2011-02-17 |  |  |  |
| 220 | 12.3 | Gforge post [no longer applicable] | milestone | 0d | 2011-03-14 | 2011-03-14 | 219 |  |  | 279d |  |  |  |  |  |
| 223 | 13 | **General support to date (only large tasks called out)** |  | 193d? | 2011-01-13 A | 2011-10-14 |  | 90% | 19.63d? | 128d |  |  |  | 252.4h | 249.2h |
| 224 | 13.1 | **older completed tasks** |  | 117d | 2011-03-22 A | 2011-09-02 A |  | 100% |  |  |  |  |  | 222.8h | 222.8h |
| 225 | 13.1.1 | General support through 6/3 |  | 53d | 2011-03-22 A | 2011-06-03 A |  | 100% |  |  |  | finish no earlier than 2011-06-03 | Dan [25%] | 106h | 106h |
| 226 | 13.1.2 | General support 6/6-6/10 |  | 5d | 2011-06-06 A | 2011-06-10 A |  | 100% |  |  |  | start no earlier than 2011-06-06 | Dan [25%] | 10h | 10h |
| 227 | 13.1.3 | General support 6/13-6/17 |  | 5d | 2011-06-13 A | 2011-06-17 A |  | 100% |  |  |  | start no earlier than 2011-06-13 | Dan [15%] | 6h | 6h |
| 228 | 13.1.4 | General support 6/20-6/24 |  | 5d | 2011-06-20 A | 2011-06-24 A |  | 100% |  |  |  | start no earlier than 2011-06-20 | Dan [15%] | 6h | 6h |
| 229 | 13.1.5 | General support 6/27-7/1 |  | 5d | 2011-06-27 A | 2011-07-01 A |  | 100% |  |  |  | start no earlier than 2011-06-27 | Dan [35%] | 14h | 14h |
| 230 | 13.1.6 | General support 7/5-7/8 |  | 4d | 2011-07-05 A | 2011-07-08 A |  | 100% |  |  |  | start no earlier than 2011-07-05 | Dan [15%] | 4.8h | 4.8h |
| 231 | 13.1.7 | General support 7/11-7/15 |  | 5d | 2011-07-11 A | 2011-07-15 A |  | 100% |  |  |  | start no earlier than 2011-07-11 | Dan [5%] | 2h | 2h |
| 232 | 13.1.8 | caTissue |  | 6d | 2011-07-11 A | 2011-07-18 A |  | 100% |  |  |  | start no earlier than 2011-07-11 | Greg [25%] | 12h | 12h |
| 233 | 13.1.9 | General support 7/18-7/23 |  | 5d | 2011-07-18 A | 2011-07-22 A |  | 100% |  |  |  | start no earlier than 2011-07-18 | Dan [10%] | 4h | 4h |
| 234 | 13.1.10 | 508 remediation (manual tests) for hosted UPT |  | 3d | 2011-07-20 A | 2011-07-22 A |  | 100% |  |  |  | start no earlier than 2011-07-20 | Greg [25%] | 6h | 6h |
| 235 | 13.1.11 | General support 7/25-7/29 |  | 5d | 2011-07-25 A | 2011-07-29 A |  | 100% |  |  |  | start no earlier than 2011-07-25 | Dan [15%] | 6h | 6h |
| 236 | 13.1.12 | caTissue (caGrid/SDK integration) |  | 4d | 2011-07-25 A | 2011-07-29 A |  | 100% |  |  |  | start no earlier than 2011-07-25 | Greg [25%] | 8h | 8h |
| 237 | 13.1.13 | General support 8/1-8/5 |  | 5d | 2011-08-01 A | 2011-08-05 A |  | 100% |  |  |  | start no earlier than 2011-08-01 | Dan [10%] | 4h | 4h |
| 238 | 13.1.14 | General support 8/8-8/12 |  | 5d | 2011-08-08 A | 2011-08-12 A |  | 100% |  |  |  | start no earlier than 2011-08-08 | Dan [10%] | 4h | 4h |
| 239 | 13.1.15 | CLOB modeling |  | 1d | 2011-08-12 A | 2011-08-12 A |  | 100% |  |  |  | start no earlier than 2011-08-12 | Prasad | 8h | 8h |
| 240 | 13.1.16 | General support 8/15-8/19 |  | 5d | 2011-08-15 A | 2011-08-19 A |  | 100% |  |  |  | start no earlier than 2011-08-15 | Dan [10%] | 4h | 4h |
| 241 | 13.1.17 | CSM connection pooling |  | 1d | 2011-08-16 A | 2011-08-16 A |  | 100% |  |  |  | start no earlier than 2011-08-16 | Prasad | 8h | 8h |
| 242 | 13.1.18 | General support 8/22-8/26 |  | 5d | 2011-08-22 A | 2011-08-26 A |  | 100% |  |  |  | start no earlier than 2011-08-22 | Dan [15%] | 6h | 6h |
| 243 | 13.1.19 | General support 8/29-9/2 |  | 5d | 2011-08-29 A | 2011-09-02 A |  | 100% |  |  |  | start no earlier than 2011-08-29 | Dan [10%] | 4h | 4h |
| 244 | 13.2 | General support 9/6-9/9 |  | 4d | 2011-09-06 A | 2011-09-09 A |  | 100% |  |  |  | start no earlier than 2011-09-06 | Greg [30%] | 9.6h | 9.6h |
| 245 | 13.3 | General support 9/12-9/16 |  | 5d | 2011-09-12 A | 2011-09-16 A |  | 100% |  |  |  | start no earlier than 2011-09-12 | Greg [10%] | 4h | 4h |
| 246 | 13.4 | caArray/UPT issues with user-created groups (follow-up expected) |  | 3d | 2011-09-12 A | 2011-09-14 A |  | 100% |  |  |  | start no earlier than 2011-09-12 | Greg [20%] | 4.8h | 4.8h |
| 247 | 13.5 | General support 9/19-9/23 |  | 5d | 2011-09-19 A | 2011-09-23 A |  | 100% |  |  |  | start no earlier than 2011-09-19 | Greg [10%] | 4h | 4h |
| 248 | 13.6 | General support 9/26-9/30 |  | 5d | 2011-09-26 A | 2011-09-30 A |  | 100% |  |  |  | start no earlier than 2011-09-26 | Greg [10%] | 4h | 4h |
| 249 | 13.7 | General support 10/3-10/7 |  | 5d | 2011-10-03 A | 2011-10-07 A |  | 100% |  |  |  | start no earlier than 2011-09-26 |  |  |  |
| 250 | 13.8 | General support 10/11-10/14 |  | 4d | 2011-10-11 | 2011-10-14 |  |  |  | 128d |  | start no earlier than 2011-10-11 | Greg [10%] | 3.2h |  |
| 251 | 13.9 | caArray/UPT DB investigation (?) |  | 5d? | 2011-09-26 | 2011-09-30 |  |  |  | 137d |  | start no earlier than 2011-09-26 |  |  |  |
| 252 | 13.10 | Document migration activities/issues moving from SDK 4.0 to 4.4 (using caDSR as an example) |  | 1d? | 2011-07-05 | 2011-07-05 |  |  |  | 199d |  | start no earlier than 2011-07-05 |  |  |  |
| 253 | 13.11 | Write SDK product support FAQ’s and post on KC |  | 5d? | 2011-01-13 | 2011-01-19 |  |  |  | 316d |  | start no earlier than 2011-01-13 |  |  |  |
| 254 | 13.12 | Write CSM product support FAQ’s and post on KC |  | 3d? | 2011-01-13 | 2011-01-17 |  |  |  | 318d |  | start no earlier than 2011-01-13 |  |  |  |

| ID | WBS | Task | Duration | Start | Finish | Complete | Remaining | Total slack | Constraint | Resources | Work | Actual work |
| --- | --- | --- | --- | --- | --- | --- | --- | --- | --- | --- | --- | --- |
| 257 | 14 | **Project Management to date (only large tasks called out)** | 152d | 2011-03-14 A | 2011-10-17 | 90% | 15.83d | 127d |  |  | 408.4h | 378.4h |
| 258 | 14.1 | **older completed tasks** | 98d | 2011-03-14 A | 2011-07-29 A | 100% |  |  |  |  | 314h | 314h |
| 259 | 14.1.1 | PM and misc work through 6/3 | 59d | 2011-03-14 A | 2011-06-03 A | 100% |  |  | finish no earlier than 2011-06-03 | Greg [50%] | 236h | 236h |
| 260 | 14.1.2 | General PM 6/6-6/10 | 5d | 2011-06-06 A | 2011-06-10 A | 100% |  |  | start no earlier than 2011-06-06 | Greg [25%] | 10h | 10h |
| 261 | 14.1.3 | General PM 6/13-6/17 | 5d | 2011-06-13 A | 2011-06-17 A | 100% |  |  | start no earlier than 2011-06-13 | Greg [25%] | 10h | 10h |
| 262 | 14.1.4 | Update project management plan | 2d | 2011-06-22 A | 2011-06-23 A | 100% |  |  | start no earlier than 2011-06-22 | Greg [50%] | 8h | 8h |
| 263 | 14.1.5 | General PM 6/23-6/24 | 2d | 2011-06-23 A | 2011-06-24 A | 100% |  |  | start no earlier than 2011-06-23 | Greg [25%] | 4h | 4h |
| 264 | 14.1.6 | General PM 6/27-7/1 | 5d | 2011-06-27 A | 2011-07-01 A | 100% |  |  | start no earlier than 2011-06-27 | Greg [25%] | 10h | 10h |
| 265 | 14.1.7 | General PM 7/5-7/8 | 4d | 2011-07-05 A | 2011-07-08 A | 100% |  |  | start no earlier than 2011-07-05 | Greg [25%] | 8h | 8h |
| 266 | 14.1.8 | General PM 7/11-7/15 | 5d | 2011-07-11 A | 2011-07-15 A | 100% |  |  | start no earlier than 2011-07-11 | Greg [25%] | 10h | 10h |
| 267 | 14.1.9 | General PM 7/18-7/23 | 5d | 2011-07-18 A | 2011-07-22 A | 100% |  |  | start no earlier than 2011-07-18 | Greg [25%] | 10h | 10h |
| 268 | 14.1.10 | General PM 7/25-7/29 | 4d | 2011-07-25 A | 2011-07-29 A | 100% |  |  | start no earlier than 2011-07-25 | Greg [25%] | 8h | 8h |
| 269 | 14.2 | General PM 8/1-8/4 | 4d | 2011-08-01 A | 2011-08-04 A | 100% |  |  | start no earlier than 2011-08-01 | Greg [25%] | 8h | 8h |
| 270 | 14.3 | General PM 8/15-8/19 | 5d | 2011-08-15 A | 2011-08-19 A | 100% |  |  | start no earlier than 2011-08-15 | Greg [35%] | 14h | 14h |
| 271 | 14.4 | General PM 8/22-8/26 | 5d | 2011-08-22 A | 2011-08-26 A | 100% |  |  | finish no earlier than 2011-08-26 | Greg [25%] | 10h | 10h |
| 272 | 14.5 | General PM 8/29-9/2 | 5d | 2011-08-29 A | 2011-09-02 A | 100% |  |  | start no earlier than 2011-08-29 | Greg [25%] | 10h | 10h |
| 273 | 14.6 | General PM 9/6-9/9 | 4d | 2011-09-06 A | 2011-09-09 A | 100% |  |  | start no earlier than 2011-09-06 | Greg [20%] | 6.4h | 6.4h |
| 274 | 14.7 | General PM 9/12-9/16 | 5d | 2011-09-12 A | 2011-09-16 A | 100% |  |  | start no earlier than 2011-09-12 | Greg [20%] | 8h | 8h |
| 275 | 14.8 | General PM 9/19-9/23 | 5d | 2011-09-19 A | 2011-09-23 A | 100% |  |  | start no earlier than 2011-09-19 | Greg [20%] | 8h | 8h |
| 276 | 14.9 | General PM 9/26-9/30 | 5d | 2011-09-26 | 2011-09-30 |  |  | 137d | start no earlier than 2011-09-26 | Greg [30%] | 12h |  |
| 277 | 14.10 | General PM 10/3-10/7 | 5d | 2011-10-03 | 2011-10-07 |  |  | 132d | start no earlier than 2011-10-03 | Greg [25%] | 10h |  |
| 278 | 14.11 | General PM 10/11-10/14 | 5d | 2011-10-11 | 2011-10-17 |  |  | 127d | start no earlier than 2011-10-11 | Greg [20%] | 8h |  |
| 281 | 15 | **Other unplanned** | 1d? | 2011-01-13 | 2011-01-13 |  |  | 320d |  |  |  |  |
| 282 | 15.1 | 508 compliance review and plan | 1d? | 2011-01-13 | 2011-01-13 |  |  | 320d | start no earlier than 2011-01-13 |  |  |  |
| 283 | 15.2 | ECCF compliance review and plan | 1d? | 2011-01-13 | 2011-01-13 |  |  | 320d | start no earlier than 2011-01-13 |  |  |  |
| 284 | 15.3 | Effect of NCI CBIIT’s Enterprise Security Program on CSM | 1d? | 2011-01-13 | 2011-01-13 |  |  | 320d | start no earlier than 2011-01-13 |  |  |  |
| 285 | 15.4 | Effect of NCI CBIIT’s Enterprise Security Program on CLM | 1d? | 2011-01-13 | 2011-01-13 |  |  | 320d | start no earlier than 2011-01-13 |  |  |  |
